# STA-ENC-ENV

Schedule from Primavera P6, 2026-03-02 to 2026-08-12, data date 2026-03-02.

## Calendars

- 5 Day: Mon-Fri 08:00-12:00, 13:00-17:00; Sat-Sun off.

## Schedule

| ID | Activity | Duration | Start | Finish | Predecessors | Total float | Free float |
| --- | --- | --- | --- | --- | --- | --- | --- |
| B02-001 | Mobilization | 2d | 2026-03-02 | 2026-03-03 |  | 43d | 0d |
| B03-001 | Mobilization | 2d | 2026-03-02 | 2026-03-03 |  | 43d | 0d |
| B04-001 | Mobilization | 2d | 2026-03-02 | 2026-03-03 |  | 43d | 0d |
| B05-001 | Mobilization | 2d | 2026-03-02 | 2026-03-03 |  | 43d | 0d |
| B06-001 | Mobilization | 2d | 2026-03-02 | 2026-03-03 |  | 43d | 0d |
| B07-001 | Mobilization | 2d | 2026-03-02 | 2026-03-03 |  | 43d | 0d |
| B08-001 | Mobilization | 2d | 2026-03-02 | 2026-03-03 |  | 43d | 0d |
| B09-001 | Mobilization | 2d | 2026-03-02 | 2026-03-03 |  | 43d | 0d |
| B10-001 | Mobilization | 2d | 2026-03-02 | 2026-03-03 |  | 43d | 0d |
| C-001 | Permit Closeout | 2d | 2026-03-02 | 2026-03-03 |  | 116d | 0d |
| P-001 | Subcontractor Bid Leveling | 5d | 2026-03-02 | 2026-03-06 |  | 0d |  |
| VAC-B02 | Temporary Relocation ? B02 | 40d | 2026-03-02 | 2026-04-24 |  | 78d |  |
| VAC-B03 | Temporary Relocation ? B03 | 40d | 2026-03-02 | 2026-04-24 |  | 78d |  |
| VAC-B04 | Temporary Relocation ? B04 | 40d | 2026-03-02 | 2026-04-24 |  | 78d |  |
| VAC-B05 | Temporary Relocation ? B05 | 40d | 2026-03-02 | 2026-04-24 |  | 78d |  |
| VAC-B06 | Temporary Relocation ? B06 | 40d | 2026-03-02 | 2026-04-24 |  | 78d |  |
| VAC-B07 | Temporary Relocation ? B07 | 40d | 2026-03-02 | 2026-04-24 |  | 78d |  |
| VAC-B08 | Temporary Relocation ? B08 | 40d | 2026-03-02 | 2026-04-24 |  | 78d |  |
| VAC-B09 | Temporary Relocation ? B09 | 40d | 2026-03-02 | 2026-04-24 |  | 78d |  |
| VAC-B10 | Temporary Relocation ? B10 | 40d | 2026-03-02 | 2026-04-24 |  | 78d |  |
| B02-002 | Scaffolding - Setup | 3d | 2026-03-04 | 2026-03-06 | B02-001 | 43d | 0d |
| B03-002 | Scaffolding - Setup | 3d | 2026-03-04 | 2026-03-06 | B03-001 | 43d | 0d |
| B04-002 | Scaffolding - Setup | 3d | 2026-03-04 | 2026-03-06 | B04-001 | 43d | 0d |
| B05-002 | Scaffolding - Setup | 3d | 2026-03-04 | 2026-03-06 | B05-001 | 43d | 0d |
| B06-002 | Scaffolding - Setup | 3d | 2026-03-04 | 2026-03-06 | B06-001 | 43d | 0d |
| B07-002 | Scaffolding - Setup | 3d | 2026-03-04 | 2026-03-06 | B07-001 | 43d | 0d |
| B08-002 | Scaffolding - Setup | 3d | 2026-03-04 | 2026-03-06 | B08-001 | 43d | 0d |
| B09-002 | Scaffolding - Setup | 3d | 2026-03-04 | 2026-03-06 | B09-001 | 43d | 0d |
| B10-002 | Scaffolding - Setup | 3d | 2026-03-04 | 2026-03-06 | B10-001 | 43d | 0d |
| C-002 | Final AHJ Inspection | 0d | 2026-03-04 | 2026-03-03 | C-001 | 116d |  |
| B02-003 | Staging + Site Logistics | 2d | 2026-03-09 | 2026-03-10 | B02-002 | 43d | 0d |
| B03-003 | Staging + Site Logistics | 2d | 2026-03-09 | 2026-03-10 | B03-002 | 43d | 0d |
| B04-003 | Staging + Site Logistics | 2d | 2026-03-09 | 2026-03-10 | B04-002 | 43d | 0d |
| B05-003 | Staging + Site Logistics | 2d | 2026-03-09 | 2026-03-10 | B05-002 | 43d | 0d |
| B06-003 | Staging + Site Logistics | 2d | 2026-03-09 | 2026-03-10 | B06-002 | 43d | 0d |
| B07-003 | Staging + Site Logistics | 2d | 2026-03-09 | 2026-03-10 | B07-002 | 43d | 0d |
| B08-003 | Staging + Site Logistics | 2d | 2026-03-09 | 2026-03-10 | B08-002 | 43d | 0d |
| B09-003 | Staging + Site Logistics | 2d | 2026-03-09 | 2026-03-10 | B09-002 | 43d | 0d |
| B10-003 | Staging + Site Logistics | 2d | 2026-03-09 | 2026-03-10 | B10-002 | 43d | 0d |
| P-002 | Contract Negotiation & Award | 5d | 2026-03-09 | 2026-03-13 | P-001 | 0d |  |
| B02-004 | Demo North Elevation | 5d | 2026-03-11 | 2026-03-17 | B02-003 | 43d | 0d |
| B03-004 | Demo North Elevation | 5d | 2026-03-11 | 2026-03-17 | B03-003 | 43d | 0d |
| B04-004 | Demo North Elevation | 5d | 2026-03-11 | 2026-03-17 | B04-003 | 43d | 0d |
| B05-004 | Demo North Elevation | 5d | 2026-03-11 | 2026-03-17 | B05-003 | 43d | 0d |
| B06-004 | Demo North Elevation | 5d | 2026-03-11 | 2026-03-17 | B06-003 | 43d | 0d |
| B07-004 | Demo North Elevation | 5d | 2026-03-11 | 2026-03-17 | B07-003 | 43d | 0d |
| B08-004 | Demo North Elevation | 5d | 2026-03-11 | 2026-03-17 | B08-003 | 43d | 0d |
| B09-004 | Demo North Elevation | 5d | 2026-03-11 | 2026-03-17 | B09-003 | 43d | 0d |
| B10-004 | Demo North Elevation | 5d | 2026-03-11 | 2026-03-17 | B10-003 | 43d | 0d |
| M-001 | Submittal Preparation | 3d | 2026-03-16 | 2026-03-18 | P-002 | 0d |  |
| B02-005 | Demo South Elevation | 5d | 2026-03-18 | 2026-03-24 | B02-004 | 43d | 0d |
| B03-005 | Demo South Elevation | 5d | 2026-03-18 | 2026-03-24 | B03-004 | 43d | 0d |
| B04-005 | Demo South Elevation | 5d | 2026-03-18 | 2026-03-24 | B04-004 | 43d | 0d |
| B05-005 | Demo South Elevation | 5d | 2026-03-18 | 2026-03-24 | B05-004 | 43d | 0d |
| B06-005 | Demo South Elevation | 5d | 2026-03-18 | 2026-03-24 | B06-004 | 43d | 0d |
| B07-005 | Demo South Elevation | 5d | 2026-03-18 | 2026-03-24 | B07-004 | 43d | 0d |
| B08-005 | Demo South Elevation | 5d | 2026-03-18 | 2026-03-24 | B08-004 | 43d | 0d |
| B09-005 | Demo South Elevation | 5d | 2026-03-18 | 2026-03-24 | B09-004 | 43d | 0d |
| B10-005 | Demo South Elevation | 5d | 2026-03-18 | 2026-03-24 | B10-004 | 43d | 0d |
| M-002 | Submittal Review & Approval | 7d | 2026-03-19 | 2026-03-27 | M-001 | 0d |  |
| B02-006 | Remove Roof Membrane | 4d | 2026-03-25 | 2026-03-30 | B02-005 | 43d | 0d |
| B03-006 | Remove Roof Membrane | 4d | 2026-03-25 | 2026-03-30 | B03-005 | 43d | 0d |
| B04-006 | Remove Roof Membrane | 4d | 2026-03-25 | 2026-03-30 | B04-005 | 43d | 0d |
| B05-006 | Remove Roof Membrane | 4d | 2026-03-25 | 2026-03-30 | B05-005 | 43d | 0d |
| B06-006 | Remove Roof Membrane | 4d | 2026-03-25 | 2026-03-30 | B06-005 | 43d | 0d |
| B07-006 | Remove Roof Membrane | 4d | 2026-03-25 | 2026-03-30 | B07-005 | 43d | 0d |
| B08-006 | Remove Roof Membrane | 4d | 2026-03-25 | 2026-03-30 | B08-005 | 43d | 0d |
| B09-006 | Remove Roof Membrane | 4d | 2026-03-25 | 2026-03-30 | B09-005 | 43d | 0d |
| B10-006 | Remove Roof Membrane | 4d | 2026-03-25 | 2026-03-30 | B10-005 | 43d | 0d |
| M-003 | Fabrication Lead Time ? Critical Materials | 15d | 2026-03-30 | 2026-04-17 | M-002 | 0d |  |

| ID | Activity | Duration | Start | Finish | Predecessors | Total float | Free float |
| --- | --- | --- | --- | --- | --- | --- | --- |
| B02-007 | Wall Framing - North | 6d | 2026-03-31 | 2026-04-07 | B02-006 | 43d | 0d |
| B03-007 | Wall Framing - North | 6d | 2026-03-31 | 2026-04-07 | B03-006 | 43d | 0d |
| B04-007 | Wall Framing - North | 6d | 2026-03-31 | 2026-04-07 | B04-006 | 43d | 0d |
| B05-007 | Wall Framing - North | 6d | 2026-03-31 | 2026-04-07 | B05-006 | 43d | 0d |
| B06-007 | Wall Framing - North | 6d | 2026-03-31 | 2026-04-07 | B06-006 | 43d | 0d |
| B07-007 | Wall Framing - North | 6d | 2026-03-31 | 2026-04-07 | B07-006 | 43d | 0d |
| B08-007 | Wall Framing - North | 6d | 2026-03-31 | 2026-04-07 | B08-006 | 43d | 0d |
| B09-007 | Wall Framing - North | 6d | 2026-03-31 | 2026-04-07 | B09-006 | 43d | 0d |
| B10-007 | Wall Framing - North | 6d | 2026-03-31 | 2026-04-07 | B10-006 | 43d | 0d |
| B02-008 | Wall Framing - South | 6d | 2026-04-08 | 2026-04-15 | B02-007 | 43d | 0d |
| B03-008 | Wall Framing - South | 6d | 2026-04-08 | 2026-04-15 | B03-007 | 43d | 0d |
| B04-008 | Wall Framing - South | 6d | 2026-04-08 | 2026-04-15 | B04-007 | 43d | 0d |
| B05-008 | Wall Framing - South | 6d | 2026-04-08 | 2026-04-15 | B05-007 | 43d | 0d |
| B06-008 | Wall Framing - South | 6d | 2026-04-08 | 2026-04-15 | B06-007 | 43d | 0d |
| B07-008 | Wall Framing - South | 6d | 2026-04-08 | 2026-04-15 | B07-007 | 43d | 0d |
| B08-008 | Wall Framing - South | 6d | 2026-04-08 | 2026-04-15 | B08-007 | 43d | 0d |
| B09-008 | Wall Framing - South | 6d | 2026-04-08 | 2026-04-15 | B09-007 | 43d | 0d |
| B10-008 | Wall Framing - South | 6d | 2026-04-08 | 2026-04-15 | B10-007 | 43d | 0d |
| B02-009 | Sheathing Repair | 5d | 2026-04-16 | 2026-04-22 | B02-008 | 43d | 0d |
| B03-009 | Sheathing Repair | 5d | 2026-04-16 | 2026-04-22 | B03-008 | 43d | 0d |
| B04-009 | Sheathing Repair | 5d | 2026-04-16 | 2026-04-22 | B04-008 | 43d | 0d |
| B05-009 | Sheathing Repair | 5d | 2026-04-16 | 2026-04-22 | B05-008 | 43d | 0d |
| B06-009 | Sheathing Repair | 5d | 2026-04-16 | 2026-04-22 | B06-008 | 43d | 0d |
| B07-009 | Sheathing Repair | 5d | 2026-04-16 | 2026-04-22 | B07-008 | 43d | 0d |
| B08-009 | Sheathing Repair | 5d | 2026-04-16 | 2026-04-22 | B08-008 | 43d | 0d |
| B09-009 | Sheathing Repair | 5d | 2026-04-16 | 2026-04-22 | B09-008 | 43d | 0d |
| B10-009 | Sheathing Repair | 5d | 2026-04-16 | 2026-04-22 | B10-008 | 43d | 0d |
| M-004 | Delivery Coordination | 3d | 2026-04-20 | 2026-04-22 | M-003 | 0d |  |
| B02-010 | Install WRB - North | 4d | 2026-04-23 | 2026-04-28 | B02-009 | 43d | 0d |
| B03-010 | Install WRB - North | 4d | 2026-04-23 | 2026-04-28 | B03-009 | 43d | 0d |
| B04-010 | Install WRB - North | 4d | 2026-04-23 | 2026-04-28 | B04-009 | 43d | 0d |
| B05-010 | Install WRB - North | 4d | 2026-04-23 | 2026-04-28 | B05-009 | 43d | 0d |
| B06-010 | Install WRB - North | 4d | 2026-04-23 | 2026-04-28 | B06-009 | 43d | 0d |
| B07-010 | Install WRB - North | 4d | 2026-04-23 | 2026-04-28 | B07-009 | 43d | 0d |
| B08-010 | Install WRB - North | 4d | 2026-04-23 | 2026-04-28 | B08-009 | 43d | 0d |
| B09-010 | Install WRB - North | 4d | 2026-04-23 | 2026-04-28 | B09-009 | 43d | 0d |
| B10-010 | Install WRB - North | 4d | 2026-04-23 | 2026-04-28 | B10-009 | 43d | 0d |
| MOB-001 | Site Logistics Plan Setup | 2d | 2026-04-23 | 2026-04-24 | M-004 | 0d |  |
| MOB-002 | Field Office Setup | 2d | 2026-04-27 | 2026-04-28 | MOB-001 | 0d |  |
| B02-011 | Install WRB - South | 4d | 2026-04-29 | 2026-05-04 | B02-010 | 43d | 0d |
| B03-011 | Install WRB - South | 4d | 2026-04-29 | 2026-05-04 | B03-010 | 43d | 0d |
| B04-011 | Install WRB - South | 4d | 2026-04-29 | 2026-05-04 | B04-010 | 43d | 0d |
| B05-011 | Install WRB - South | 4d | 2026-04-29 | 2026-05-04 | B05-010 | 43d | 0d |
| B06-011 | Install WRB - South | 4d | 2026-04-29 | 2026-05-04 | B06-010 | 43d | 0d |
| B07-011 | Install WRB - South | 4d | 2026-04-29 | 2026-05-04 | B07-010 | 43d | 0d |
| B08-011 | Install WRB - South | 4d | 2026-04-29 | 2026-05-04 | B08-010 | 43d | 0d |
| B09-011 | Install WRB - South | 4d | 2026-04-29 | 2026-05-04 | B09-010 | 43d | 0d |
| B10-011 | Install WRB - South | 4d | 2026-04-29 | 2026-05-04 | B10-010 | 43d | 0d |
| MOB-003 | Safety & QA Protocols | 1d | 2026-04-29 | 2026-04-29 | MOB-002 | 0d |  |
| B01-001 | Mobilization | 2d | 2026-04-30 | 2026-05-01 | MOB-003 | 0d |  |
| VAC-B01 | Temporary Relocation ? B01 | 40d | 2026-04-30 | 2026-06-24 | MOB-003 | 35d |  |
| B01-002 | Scaffolding - Setup | 3d | 2026-05-04 | 2026-05-06 | B01-001 | 0d |  |
| B02-012 | Install Flashing | 3d | 2026-05-05 | 2026-05-07 | B02-011 | 43d | 0d |
| B03-012 | Install Flashing | 3d | 2026-05-05 | 2026-05-07 | B03-011 | 43d | 0d |
| B04-012 | Install Flashing | 3d | 2026-05-05 | 2026-05-07 | B04-011 | 43d | 0d |
| B05-012 | Install Flashing | 3d | 2026-05-05 | 2026-05-07 | B05-011 | 43d | 0d |
| B06-012 | Install Flashing | 3d | 2026-05-05 | 2026-05-07 | B06-011 | 43d | 0d |
| B07-012 | Install Flashing | 3d | 2026-05-05 | 2026-05-07 | B07-011 | 43d | 0d |
| B08-012 | Install Flashing | 3d | 2026-05-05 | 2026-05-07 | B08-011 | 43d | 0d |
| B09-012 | Install Flashing | 3d | 2026-05-05 | 2026-05-07 | B09-011 | 43d | 0d |
| B10-012 | Install Flashing | 3d | 2026-05-05 | 2026-05-07 | B10-011 | 43d | 0d |
| B01-003 | Staging + Site Logistics | 2d | 2026-05-07 | 2026-05-08 | B01-002 | 0d |  |
| B02-013 | Reinstall Windows | 5d | 2026-05-08 | 2026-05-14 | B02-012 | 43d | 0d |
| B03-013 | Reinstall Windows | 5d | 2026-05-08 | 2026-05-14 | B03-012 | 43d | 0d |
| B04-013 | Reinstall Windows | 5d | 2026-05-08 | 2026-05-14 | B04-012 | 43d | 0d |
| B05-013 | Reinstall Windows | 5d | 2026-05-08 | 2026-05-14 | B05-012 | 43d | 0d |
| B06-013 | Reinstall Windows | 5d | 2026-05-08 | 2026-05-14 | B06-012 | 43d | 0d |
| B07-013 | Reinstall Windows | 5d | 2026-05-08 | 2026-05-14 | B07-012 | 43d | 0d |
| B08-013 | Reinstall Windows | 5d | 2026-05-08 | 2026-05-14 | B08-012 | 43d | 0d |
| B09-013 | Reinstall Windows | 5d | 2026-05-08 | 2026-05-14 | B09-012 | 43d | 0d |

| ID | Activity | Duration | Start | Finish | Predecessors | Planned start | Planned finish | Total float | Free float |
| --- | --- | --- | --- | --- | --- | --- | --- | --- | --- |
| B10-013 | Reinstall Windows | 5d | 2026-05-08 | 2026-05-14 | B10-012 |  |  | 43d | 0d |
| B01-004 | Demo North Elevation | 5d | 2026-05-11 | 2026-05-15 | B01-003 |  |  | 0d |  |
| B02-014 | Install Sealant | 2d | 2026-05-15 | 2026-05-18 | B02-013 |  |  | 43d | 0d |
| B03-014 | Install Sealant | 2d | 2026-05-15 | 2026-05-18 | B03-013 |  |  | 43d | 0d |
| B04-014 | Install Sealant | 2d | 2026-05-15 | 2026-05-18 | B04-013 |  |  | 43d | 0d |
| B05-014 | Install Sealant | 2d | 2026-05-15 | 2026-05-18 | B05-013 |  |  | 43d | 0d |
| B06-014 | Install Sealant | 2d | 2026-05-15 | 2026-05-18 | B06-013 |  |  | 43d | 0d |
| B07-014 | Install Sealant | 2d | 2026-05-15 | 2026-05-18 | B07-013 |  |  | 43d | 0d |
| B08-014 | Install Sealant | 2d | 2026-05-15 | 2026-05-18 | B08-013 |  |  | 43d | 0d |
| B09-014 | Install Sealant | 2d | 2026-05-15 | 2026-05-18 | B09-013 |  |  | 43d | 0d |
| B10-014 | Install Sealant | 2d | 2026-05-15 | 2026-05-18 | B10-013 |  |  | 43d | 0d |
| B01-005 | Demo South Elevation | 5d | 2026-05-18 | 2026-05-22 | B01-004 |  |  | 0d |  |
| B02-015 | Reinstall Doors | 3d | 2026-05-19 | 2026-05-21 | B02-014 |  |  | 43d | 0d |
| B03-015 | Reinstall Doors | 3d | 2026-05-19 | 2026-05-21 | B03-014 |  |  | 43d | 0d |
| B04-015 | Reinstall Doors | 3d | 2026-05-19 | 2026-05-21 | B04-014 |  |  | 43d | 0d |
| B05-015 | Reinstall Doors | 3d | 2026-05-19 | 2026-05-21 | B05-014 |  |  | 43d | 0d |
| B06-015 | Reinstall Doors | 3d | 2026-05-19 | 2026-05-21 | B06-014 |  |  | 43d | 0d |
| B07-015 | Reinstall Doors | 3d | 2026-05-19 | 2026-05-21 | B07-014 |  |  | 43d | 0d |
| B08-015 | Reinstall Doors | 3d | 2026-05-19 | 2026-05-21 | B08-014 |  |  | 43d | 0d |
| B09-015 | Reinstall Doors | 3d | 2026-05-19 | 2026-05-21 | B09-014 |  |  | 43d | 0d |
| B10-015 | Reinstall Doors | 3d | 2026-05-19 | 2026-05-21 | B10-014 |  |  | 43d | 0d |
| B02-016 | Install New Roof Membrane | 5d | 2026-05-22 | 2026-05-28 | B02-015 |  |  | 43d | 0d |
| B03-016 | Install New Roof Membrane | 5d | 2026-05-22 | 2026-05-28 | B03-015 |  |  | 43d | 0d |
| B04-016 | Install New Roof Membrane | 5d | 2026-05-22 | 2026-05-28 | B04-015 |  |  | 43d | 0d |
| B05-016 | Install New Roof Membrane | 5d | 2026-05-22 | 2026-05-28 | B05-015 |  |  | 43d | 0d |
| B06-016 | Install New Roof Membrane | 5d | 2026-05-22 | 2026-05-28 | B06-015 |  |  | 43d | 0d |
| B07-016 | Install New Roof Membrane | 5d | 2026-05-22 | 2026-05-28 | B07-015 |  |  | 43d | 0d |
| B08-016 | Install New Roof Membrane | 5d | 2026-05-22 | 2026-05-28 | B08-015 |  |  | 43d | 0d |
| B09-016 | Install New Roof Membrane | 5d | 2026-05-22 | 2026-05-28 | B09-015 |  |  | 43d | 0d |
| B10-016 | Install New Roof Membrane | 5d | 2026-05-22 | 2026-05-28 | B10-015 |  |  | 43d | 0d |
| B01-006 | Remove Roof Membrane | 4d | 2026-05-25 | 2026-05-28 | B01-005 |  |  | 0d |  |
| B01-007 | Wall Framing - North | 6d | 2026-05-29 | 2026-06-05 | B01-006 |  |  | 0d |  |
| B02-017 | Drywall Repair | 4d | 2026-05-29 | 2026-06-03 | B02-016 |  |  | 43d | 0d |
| B03-017 | Drywall Repair | 4d | 2026-05-29 | 2026-06-03 | B03-016 |  |  | 43d | 0d |
| B04-017 | Drywall Repair | 4d | 2026-05-29 | 2026-06-03 | B04-016 |  |  | 43d | 0d |
| B05-017 | Drywall Repair | 4d | 2026-05-29 | 2026-06-03 | B05-016 |  |  | 43d | 0d |
| B06-017 | Drywall Repair | 4d | 2026-05-29 | 2026-06-03 | B06-016 |  |  | 43d | 0d |
| B07-017 | Drywall Repair | 4d | 2026-05-29 | 2026-06-03 | B07-016 |  |  | 43d | 0d |
| B08-017 | Drywall Repair | 4d | 2026-05-29 | 2026-06-03 | B08-016 |  |  | 43d | 0d |
| B09-017 | Drywall Repair | 4d | 2026-05-29 | 2026-06-03 | B09-016 |  |  | 43d | 0d |
| B10-017 | Drywall Repair | 4d | 2026-05-29 | 2026-06-03 | B10-016 |  |  | 43d | 0d |
| B02-018 | Paint Touch-Up | 2d | 2026-06-04 | 2026-06-05 | B02-017 |  |  | 43d | 0d |
| B03-018 | Paint Touch-Up | 2d | 2026-06-04 | 2026-06-05 | B03-017 |  |  | 43d | 0d |
| B04-018 | Paint Touch-Up | 2d | 2026-06-04 | 2026-06-05 | B04-017 |  |  | 43d | 0d |
| B05-018 | Paint Touch-Up | 2d | 2026-06-04 | 2026-06-05 | B05-017 |  |  | 43d | 0d |
| B06-018 | Paint Touch-Up | 2d | 2026-06-04 | 2026-06-05 | B06-017 |  |  | 43d | 0d |
| B07-018 | Paint Touch-Up | 2d | 2026-06-04 | 2026-06-05 | B07-017 |  |  | 43d | 0d |
| B08-018 | Paint Touch-Up | 2d | 2026-06-04 | 2026-06-05 | B08-017 |  |  | 43d | 0d |
| B09-018 | Paint Touch-Up | 2d | 2026-06-04 | 2026-06-05 | B09-017 |  |  | 43d | 0d |
| B10-018 | Paint Touch-Up | 2d | 2026-06-04 | 2026-06-05 | B10-017 |  |  | 43d | 0d |
| B01-008 | Wall Framing - South | 6d | 2026-06-08 | 2026-06-15 | B01-007 |  |  | 0d |  |
| B02-019 | 3rd Party WRB Inspection | 0d | 2026-06-08 | 2026-06-07 | B02-018 | 2026-06-08 | 2026-06-05 | 43d | 0d |
| B02-020 | City Waterproofing Inspection | 0d | 2026-06-08 | 2026-06-07 | B02-019 | 2026-06-08 | 2026-06-05 | 43d | 0d |
| B02-021 | 3rd Party Window Inspection | 0d | 2026-06-08 | 2026-06-07 | B02-020 | 2026-06-08 | 2026-06-05 | 43d | 0d |
| B02-022 | City Final Inspection | 0d | 2026-06-08 | 2026-06-07 | B02-021 | 2026-06-08 | 2026-06-05 | 43d | 0d |
| B02-023 | Punchlist Walk | 1d | 2026-06-08 | 2026-06-08 | B02-022 |  |  | 43d | 0d |
| B03-019 | 3rd Party WRB Inspection | 0d | 2026-06-08 | 2026-06-07 | B03-018 | 2026-06-08 | 2026-06-05 | 43d | 0d |
| B03-020 | City Waterproofing Inspection | 0d | 2026-06-08 | 2026-06-07 | B03-019 | 2026-06-08 | 2026-06-05 | 43d | 0d |
| B03-021 | 3rd Party Window Inspection | 0d | 2026-06-08 | 2026-06-07 | B03-020 | 2026-06-08 | 2026-06-05 | 43d | 0d |
| B03-022 | City Final Inspection | 0d | 2026-06-08 | 2026-06-07 | B03-021 | 2026-06-08 | 2026-06-05 | 43d | 0d |
| B03-023 | Punchlist Walk | 1d | 2026-06-08 | 2026-06-08 | B03-022 |  |  | 43d | 0d |
| B04-019 | 3rd Party WRB Inspection | 0d | 2026-06-08 | 2026-06-07 | B04-018 | 2026-06-08 | 2026-06-05 | 43d | 0d |
| B04-020 | City Waterproofing Inspection | 0d | 2026-06-08 | 2026-06-07 | B04-019 | 2026-06-08 | 2026-06-05 | 43d | 0d |
| B04-021 | 3rd Party Window Inspection | 0d | 2026-06-08 | 2026-06-07 | B04-020 | 2026-06-08 | 2026-06-05 | 43d | 0d |
| B04-022 | City Final Inspection | 0d | 2026-06-08 | 2026-06-07 | B04-021 | 2026-06-08 | 2026-06-05 | 43d | 0d |
| B04-023 | Punchlist Walk | 1d | 2026-06-08 | 2026-06-08 | B04-022 |  |  | 43d | 0d |
| B05-019 | 3rd Party WRB Inspection | 0d | 2026-06-08 | 2026-06-07 | B05-018 | 2026-06-08 | 2026-06-05 | 43d | 0d |
| B05-020 | City Waterproofing Inspection | 0d | 2026-06-08 | 2026-06-07 | B05-019 | 2026-06-08 | 2026-06-05 | 43d | 0d |
| B05-021 | 3rd Party Window Inspection | 0d | 2026-06-08 | 2026-06-07 | B05-020 | 2026-06-08 | 2026-06-05 | 43d | 0d |
| B05-022 | City Final Inspection | 0d | 2026-06-08 | 2026-06-07 | B05-021 | 2026-06-08 | 2026-06-05 | 43d | 0d |

| ID | Activity | Duration | Start | Finish | Predecessors | Planned start | Planned finish | Total float | Free float |
| --- | --- | --- | --- | --- | --- | --- | --- | --- | --- |
| B05-023 | Punchlist Walk | 1d | 2026-06-08 | 2026-06-08 | B05-022 |  |  | 43d | 0d |
| B06-019 | 3rd Party WRB Inspection | 0d | 2026-06-08 | 2026-06-07 | B06-018 | 2026-06-08 | 2026-06-05 | 43d | 0d |
| B06-020 | City Waterproofing Inspection | 0d | 2026-06-08 | 2026-06-07 | B06-019 | 2026-06-08 | 2026-06-05 | 43d | 0d |
| B06-021 | 3rd Party Window Inspection | 0d | 2026-06-08 | 2026-06-07 | B06-020 | 2026-06-08 | 2026-06-05 | 43d | 0d |
| B06-022 | City Final Inspection | 0d | 2026-06-08 | 2026-06-07 | B06-021 | 2026-06-08 | 2026-06-05 | 43d | 0d |
| B06-023 | Punchlist Walk | 1d | 2026-06-08 | 2026-06-08 | B06-022 |  |  | 43d | 0d |
| B07-019 | 3rd Party WRB Inspection | 0d | 2026-06-08 | 2026-06-07 | B07-018 | 2026-06-08 | 2026-06-05 | 43d | 0d |
| B07-020 | City Waterproofing Inspection | 0d | 2026-06-08 | 2026-06-07 | B07-019 | 2026-06-08 | 2026-06-05 | 43d | 0d |
| B07-021 | 3rd Party Window Inspection | 0d | 2026-06-08 | 2026-06-07 | B07-020 | 2026-06-08 | 2026-06-05 | 43d | 0d |
| B07-022 | City Final Inspection | 0d | 2026-06-08 | 2026-06-07 | B07-021 | 2026-06-08 | 2026-06-05 | 43d | 0d |
| B07-023 | Punchlist Walk | 1d | 2026-06-08 | 2026-06-08 | B07-022 |  |  | 43d | 0d |
| B08-019 | 3rd Party WRB Inspection | 0d | 2026-06-08 | 2026-06-07 | B08-018 | 2026-06-08 | 2026-06-05 | 43d | 0d |
| B08-020 | City Waterproofing Inspection | 0d | 2026-06-08 | 2026-06-07 | B08-019 | 2026-06-08 | 2026-06-05 | 43d | 0d |
| B08-021 | 3rd Party Window Inspection | 0d | 2026-06-08 | 2026-06-07 | B08-020 | 2026-06-08 | 2026-06-05 | 43d | 0d |
| B08-022 | City Final Inspection | 0d | 2026-06-08 | 2026-06-07 | B08-021 | 2026-06-08 | 2026-06-05 | 43d | 0d |
| B08-023 | Punchlist Walk | 1d | 2026-06-08 | 2026-06-08 | B08-022 |  |  | 43d | 0d |
| B09-019 | 3rd Party WRB Inspection | 0d | 2026-06-08 | 2026-06-07 | B09-018 | 2026-06-08 | 2026-06-05 | 43d | 0d |
| B09-020 | City Waterproofing Inspection | 0d | 2026-06-08 | 2026-06-07 | B09-019 | 2026-06-08 | 2026-06-05 | 43d | 0d |
| B09-021 | 3rd Party Window Inspection | 0d | 2026-06-08 | 2026-06-07 | B09-020 | 2026-06-08 | 2026-06-05 | 43d | 0d |
| B09-022 | City Final Inspection | 0d | 2026-06-08 | 2026-06-07 | B09-021 | 2026-06-08 | 2026-06-05 | 43d | 0d |
| B09-023 | Punchlist Walk | 1d | 2026-06-08 | 2026-06-08 | B09-022 |  |  | 43d | 0d |
| B10-019 | 3rd Party WRB Inspection | 0d | 2026-06-08 | 2026-06-07 | B10-018 | 2026-06-08 | 2026-06-05 | 43d | 0d |
| B10-020 | City Waterproofing Inspection | 0d | 2026-06-08 | 2026-06-07 | B10-019 | 2026-06-08 | 2026-06-05 | 43d | 0d |
| B10-021 | 3rd Party Window Inspection | 0d | 2026-06-08 | 2026-06-07 | B10-020 | 2026-06-08 | 2026-06-05 | 43d | 0d |
| B10-022 | City Final Inspection | 0d | 2026-06-08 | 2026-06-07 | B10-021 | 2026-06-08 | 2026-06-05 | 43d | 0d |
| B10-023 | Punchlist Walk | 1d | 2026-06-08 | 2026-06-08 | B10-022 |  |  | 43d | 0d |
| B02-024 | Punch Work | 2d | 2026-06-09 | 2026-06-10 | B02-023 |  |  | 43d | 0d |
| B03-024 | Punch Work | 2d | 2026-06-09 | 2026-06-10 | B03-023 |  |  | 43d | 0d |
| B04-024 | Punch Work | 2d | 2026-06-09 | 2026-06-10 | B04-023 |  |  | 43d | 0d |
| B05-024 | Punch Work | 2d | 2026-06-09 | 2026-06-10 | B05-023 |  |  | 43d | 0d |
| B06-024 | Punch Work | 2d | 2026-06-09 | 2026-06-10 | B06-023 |  |  | 43d | 0d |
| B07-024 | Punch Work | 2d | 2026-06-09 | 2026-06-10 | B07-023 |  |  | 43d | 0d |
| B08-024 | Punch Work | 2d | 2026-06-09 | 2026-06-10 | B08-023 |  |  | 43d | 0d |
| B09-024 | Punch Work | 2d | 2026-06-09 | 2026-06-10 | B09-023 |  |  | 43d | 0d |
| B10-024 | Punch Work | 2d | 2026-06-09 | 2026-06-10 | B10-023 |  |  | 43d | 0d |
| B02-025 | Final Clean | 1d | 2026-06-11 | 2026-06-11 | B02-024 |  |  | 43d | 0d |
| B03-025 | Final Clean | 1d | 2026-06-11 | 2026-06-11 | B03-024 |  |  | 43d | 0d |
| B04-025 | Final Clean | 1d | 2026-06-11 | 2026-06-11 | B04-024 |  |  | 43d | 0d |
| B05-025 | Final Clean | 1d | 2026-06-11 | 2026-06-11 | B05-024 |  |  | 43d | 0d |
| B06-025 | Final Clean | 1d | 2026-06-11 | 2026-06-11 | B06-024 |  |  | 43d | 0d |
| B07-025 | Final Clean | 1d | 2026-06-11 | 2026-06-11 | B07-024 |  |  | 43d | 0d |
| B08-025 | Final Clean | 1d | 2026-06-11 | 2026-06-11 | B08-024 |  |  | 43d | 0d |
| B09-025 | Final Clean | 1d | 2026-06-11 | 2026-06-11 | B09-024 |  |  | 43d | 0d |
| B10-025 | Final Clean | 1d | 2026-06-11 | 2026-06-11 | B10-024 |  |  | 43d | 0d |
| B02-026 | Demobilization | 1d | 2026-06-12 | 2026-06-12 | B02-025 |  |  | 43d |  |
| B03-026 | Demobilization | 1d | 2026-06-12 | 2026-06-12 | B03-025 |  |  | 43d |  |
| B04-026 | Demobilization | 1d | 2026-06-12 | 2026-06-12 | B04-025 |  |  | 43d |  |
| B05-026 | Demobilization | 1d | 2026-06-12 | 2026-06-12 | B05-025 |  |  | 43d |  |
| B06-026 | Demobilization | 1d | 2026-06-12 | 2026-06-12 | B06-025 |  |  | 43d |  |
| B07-026 | Demobilization | 1d | 2026-06-12 | 2026-06-12 | B07-025 |  |  | 43d |  |
| B08-026 | Demobilization | 1d | 2026-06-12 | 2026-06-12 | B08-025 |  |  | 43d |  |
| B09-026 | Demobilization | 1d | 2026-06-12 | 2026-06-12 | B09-025 |  |  | 43d |  |
| B10-026 | Demobilization | 1d | 2026-06-12 | 2026-06-12 | B10-025 |  |  | 43d |  |
| B01-009 | Sheathing Repair | 5d | 2026-06-16 | 2026-06-22 | B01-008 |  |  | 0d |  |
| B01-010 | Install WRB - North | 4d | 2026-06-23 | 2026-06-26 | B01-009 |  |  | 0d |  |
| B01-011 | Install WRB - South | 4d | 2026-06-29 | 2026-07-02 | B01-010 |  |  | 0d |  |
| B01-012 | Install Flashing | 3d | 2026-07-03 | 2026-07-07 | B01-011 |  |  | 0d |  |
| B01-013 | Reinstall Windows | 5d | 2026-07-08 | 2026-07-14 | B01-012 |  |  | 0d |  |
| B01-014 | Install Sealant | 2d | 2026-07-15 | 2026-07-16 | B01-013 |  |  | 0d |  |
| B01-015 | Reinstall Doors | 3d | 2026-07-17 | 2026-07-21 | B01-014 |  |  | 0d |  |
| B01-016 | Install New Roof Membrane | 5d | 2026-07-22 | 2026-07-28 | B01-015 |  |  | 0d |  |
| B01-017 | Drywall Repair | 4d | 2026-07-29 | 2026-08-03 | B01-016 |  |  | 0d |  |
| B01-018 | Paint Touch-Up | 2d | 2026-08-04 | 2026-08-05 | B01-017 |  |  | 0d |  |
| B01-019 | 3rd Party WRB Inspection | 0d | 2026-08-06 | 2026-08-05 | B01-018 |  |  | 0d |  |
| B01-020 | City Waterproofing Inspection | 0d | 2026-08-06 | 2026-08-05 | B01-019 |  |  | 0d |  |
| B01-021 | 3rd Party Window Inspection | 0d | 2026-08-06 | 2026-08-05 | B01-020 |  |  | 0d |  |
| B01-022 | City Final Inspection | 0d | 2026-08-06 | 2026-08-05 | B01-021 |  |  | 0d |  |
| B01-023 | Punchlist Walk | 1d | 2026-08-06 | 2026-08-06 | B01-022 |  |  | 0d |  |
| B01-024 | Punch Work | 2d | 2026-08-07 | 2026-08-10 | B01-023 |  |  | 0d |  |
| B01-025 | Final Clean | 1d | 2026-08-11 | 2026-08-11 | B01-024 |  |  | 0d |  |

| ID | Activity | Duration | Start | Finish | Predecessors | Total float |
| --- | --- | --- | --- | --- | --- | --- |
| B01-026 | Demobilization | 1d | 2026-08-12 | 2026-08-12 | B01-025 | 0d |
